# 结构及ID设计

Schedule from a web Gantt chart, 2025-08-27 to 2025-10-07.
Saturdays and Sundays are off

## Schedule

| ID | WBS | Task | Duration | Start | Finish | Predecessors | Status |
| --- | --- | --- | --- | --- | --- | --- | --- |
| 2 | 1 | 外观设计初稿 | 5d | 2025-08-27 | 2025-09-02 |  |  |
| 3 | 2 | 外观初稿评审 | 1d | 2025-09-03 | 2025-09-03 | 2 | waiting |
| 4 | 3 | 外观设计定稿 | 5d | 2025-09-04 | 2025-09-10 | 3 | waiting |
| 5 | 4 | 结构设计初稿 | 5d | 2025-09-11 | 2025-09-17 | 4 | waiting |
| 6 | 5 | 结构初稿评审 | 1d | 2025-09-18 | 2025-09-18 | 5 | waiting |
| 7 | 6 | 结构设计定稿 | 5d | 2025-09-19 | 2025-09-25 | 6 | waiting |
| 8 | 7 | 手板制作 | 7d | 2025-09-26 | 2025-10-06 | 7 | waiting |
| 9 | 8 | 手板评审 | 1d | 2025-10-07 | 2025-10-07 | 8 | waiting |
| 10 | 9 | 电路设计 | 1d | 2025-10-07 | 2025-10-07 |  | waiting |
